# 结构及ID设计

Schedule from a web Gantt chart, 2025-08-27 to 2025-11-11.
Saturdays and Sundays are off

## Schedule

| ID | WBS | Task | Duration | Start | Finish | Predecessors | Status |
| --- | --- | --- | --- | --- | --- | --- | --- |
| 2 | 1 | 外观设计初稿 | 1d | 2025-08-27 | 2025-08-27 |  |  |
| 3 | 2 | 外观初稿评审 | 1d | 2025-08-27 | 2025-08-27 |  | waiting |
| 4 | 3 | 外观设计定稿 | 5d | 2025-08-28 | 2025-09-03 | 3 | waiting |
| 5 | 4 | 结构设计初稿 | 5d | 2025-09-04 | 2025-09-10 | 4 | waiting |
| 6 | 5 | 结构初稿评审 | 1d | 2025-09-11 | 2025-09-11 | 5 | waiting |
| 7 | 6 | 结构设计定稿 | 5d | 2025-09-12 | 2025-09-18 | 6 | waiting |
| 8 | 7 | 手板制作 | 7d | 2025-09-19 | 2025-09-29 | 7 | waiting |
| 9 | 8 | 手板评审 | 1d | 2025-09-30 | 2025-09-30 | 8 | waiting |
| 10 | 9 | 外壳小批量 | 30d | 2025-10-01 | 2025-11-11 | 9 | waiting |
| 11 | 10 | 电路原理图设计 | 14d | 2025-09-19 | 2025-10-08 | 7 | waiting |
| 12 | 11 | PCB layout | 5d | 2025-10-09 | 2025-10-15 | 11 | waiting |
| 13 | 12 | 测试 | 7d | 2025-10-16 | 2025-10-24 | 12 | waiting |
